# Cronograma

Schedule from MS Project, 2023-10-05 to 2023-12-14, status date 2023-12-02, costs in €, A marks actual dates.

## Calendars

- PGPI: Mon-Fri 09:00-13:00, 15:00-19:00; Sat-Sun off. Exceptions (off unless hours are given): 2023-10-12 (Día de la Hispanidad), 2023-11-01 (Día de Todos los Santos), 2023-12-06 (Día de la Constitución), 2023-12-08 (Día de la Inmaculada).

## Resources

| Resource | Unit | Rate |
| --- | --- | --- |
| Personal (Equipo de dirección) |  | 30.46 |
| Personal (Equipo de desarrollo) |  | 20.76 |
| Personal (Equipo de calidad) |  | 29.52 |
| Ordenador portátil | Horas | 0.54 |

## Schedule

| ID | WBS | Task | Type | Duration | Start | Finish | Predecessors | Complete | Actual finish | Baseline start | Baseline finish | Baseline duration | Constraint | Deadline | Resources | Work | Actual work | Cost | Baseline cost | Actual cost |
| --- | --- | --- | --- | --- | --- | --- | --- | --- | --- | --- | --- | --- | --- | --- | --- | --- | --- | --- | --- | --- |
| 1 | I 1.1 | **Fase de inicio** |  | 11d | 2023-10-05 09:00 A | 2023-10-20 19:00 |  | 100% | 2023-10-13 10:00 | 2023-10-05 09:00 | 2023-10-20 19:00 | 11d |  |  |  | 4h | 4h | 124 | 124 | 124 |
| 2 | I 1.1.1 | Redactar el acta de constitución | manual | 2h | 2023-10-05 09:00 A | 2023-10-05 11:00 A |  | 100% |  | 2023-10-05 09:00 | 2023-10-05 11:00 | 2h |  |  | Personal (Equipo de dirección); Ordenador portátil [2 Horas] | 2h | 2h | 62 | 62 | 62 |
| 3 | I 1.1.2 | Redactar el registro de interesados | manual | 1h | 2023-10-11 09:00 A | 2023-10-11 10:00 A | 2 | 100% |  | 2023-10-11 09:00 | 2023-10-11 10:00 | 1h |  |  | Personal (Equipo de dirección); Ordenador portátil [1 Horas] | 1h | 1h | 31 | 31 | 31 |
| 4 | I 1.1.3 | Redactar el registro de supuestos | manual | 1h | 2023-10-13 09:00 A | 2023-10-13 10:00 A | 2 | 100% |  | 2023-10-13 09:00 | 2023-10-13 10:00 | 1h |  |  | Personal (Equipo de dirección); Ordenador portátil [1 Horas] | 1h | 1h | 31 | 31 | 31 |
| 5 | 1 | Comienzo e identificación del proyecto | milestone, manual | 1d | 2023-10-05 09:00 A | 2023-10-05 19:00 A |  | 100% |  | 2023-10-05 09:00 | 2023-10-05 19:00 | 1d |  | 2023-10-20 19:00 |  |  |  |  |  |  |
| 6 | D2 | **Fase de planificación** |  | 15d | 2023-10-20 09:00 A | 2023-11-10 19:00 |  | 100% | 2023-11-03 10:00 | 2023-10-20 09:00 | 2023-11-10 19:00 | 15d |  |  |  | 40.5h | 40.5h | 1,257.93 | 1,209 | 1,257.93 |
| 7 | PD 2.1 | **Fase de planificación PD** |  | 2h | 2023-10-20 09:00 A | 2023-10-20 11:00 A |  | 100% |  | 2023-10-20 09:00 | 2023-10-20 11:00 | 2h |  |  |  | 2h | 2h | 62 | 62 | 62 |
| 8 | PD 2.1.1 | Planificar la dirección del proyecto | manual | 2h | 2023-10-20 09:00 A | 2023-10-20 11:00 A |  | 100% |  | 2023-10-20 09:00 | 2023-10-20 11:00 | 2h |  |  | Personal (Equipo de dirección); Ordenador portátil [2 Horas] | 2h | 2h | 62 | 62 | 62 |
| 9 | 2 | Finalización del plan de proyecto | milestone, manual | 1d | 2023-10-20 09:00 A | 2023-10-20 19:00 A |  | 100% |  | 2023-10-20 09:00 | 2023-10-20 19:00 | 1d |  | 2023-11-10 19:00 |  |  |  |  |  |  |
| 10 | RQ 2.2 | **Fase de planificación RQ** |  | 4h | 2023-10-27 09:00 A | 2023-10-27 13:00 |  | 100% | 2023-10-27 11:00 | 2023-10-27 09:00 | 2023-10-27 13:00 | 4h |  |  |  | 4h | 4h | 124 | 124 | 124 |
| 11 | RQ 2.2.3 | Redactar la matriz de trazabilidad de los requisitos | manual | 1h | 2023-10-27 09:00 A | 2023-10-27 10:00 A | 8, 12, 18 | 100% |  | 2023-10-27 09:00 | 2023-10-27 10:00 | 1h |  |  | Personal (Equipo de dirección); Ordenador portátil [1 Horas] | 1h | 1h | 31 | 31 | 31 |
| 12 | RQ 2.2.1 | Redactar el plan de gestión de los requisitos | manual | 2h | 2023-10-27 09:00 A | 2023-10-27 11:00 A | 8, 29, 30 | 100% |  | 2023-10-27 09:00 | 2023-10-27 11:00 | 2h |  |  | Personal (Equipo de dirección); Ordenador portátil [2 Horas] | 2h | 2h | 62 | 62 | 62 |
| 13 | RQ 2.2.2 | Recopilar los requisitos | manual | 1h | 2023-10-27 09:00 A | 2023-10-27 10:00 A | 8, 12, 18 | 100% |  | 2023-10-27 09:00 | 2023-10-27 10:00 | 1h |  |  | Personal (Equipo de dirección); Ordenador portátil [1 Horas] | 1h | 1h | 31 | 31 | 31 |
| 14 | AC 2.3 | **Fase de planificación AC** |  | 11.25h | 2023-10-27 09:00 A | 2023-10-30 12:15 |  | 100% | 2023-10-27 17:00 | 2023-10-27 09:00 | 2023-10-30 12:00 | 11h |  |  |  | 11.5h | 11.5h | 357.31 | 341 | 357.31 |
| 15 | AC 2.3.4 | Desarrollar diccionario de la EDT | manual | 6h | 2023-10-27 09:00 A | 2023-10-27 17:00 A | 8, 13, 18, 16 | 100% |  | 2023-10-27 09:00 | 2023-10-27 17:00 | 6h |  |  | Personal (Equipo de dirección); Ordenador portátil [6 Horas] | 6h | 6h | 186 | 186 | 186 |
| 16 | AC 2.3.3 | Desarrollar la EDT | manual | 2.5h | 2023-10-27 09:00 A | 2023-10-27 11:30 A | 8, 13, 18, 17 | 100% |  | 2023-10-27 09:00 | 2023-10-27 11:00 | 2h |  |  | Personal (Equipo de dirección); Ordenador portátil [4 Horas] | 2.5h | 2.5h | 78.31 | 62 | 78.31 |
| 17 | AC 2.3.2 | Definir el enunciado del alcance | manual | 1h | 2023-10-27 09:00 A | 2023-10-27 10:00 A | 8, 13, 18, 37 | 100% |  | 2023-10-27 09:00 | 2023-10-27 10:00 | 1h |  |  | Personal (Equipo de dirección); Ordenador portátil [1 Horas] | 1h | 1h | 31 | 31 | 31 |
| 18 | AC 2.3.1 | Redactar el plan de gestión del alcance | manual | 2h | 2023-10-27 09:00 A | 2023-10-27 11:00 A | 8, 30, 29 | 100% |  | 2023-10-27 09:00 | 2023-10-27 11:00 | 2h |  |  | Personal (Equipo de dirección); Ordenador portátil [2 Horas] | 2h | 2h | 62 | 62 | 62 |
| 19 | CR 2.4 | **Fase de planificación CR2** |  | 8.5h | 2023-10-27 09:00 A | 2023-10-30 09:30 |  | 100% | 2023-10-27 12:30 | 2023-10-27 09:00 | 2023-10-30 09:04 | 8.08h |  |  |  | 9h | 9h | 280.62 | 248 | 280.62 |
| 20 | CR 2.4.5 | Crear el cronograma mediante la secuenciación de las actividades | manual | 3.5h | 2023-10-27 09:00 A | 2023-10-27 12:30 A | 8, 18, 24, 23, 22, 21, 32, 37 | 100% |  | 2023-10-27 09:00 | 2023-10-27 12:00 | 3h |  |  | Personal (Equipo de dirección); Ordenador portátil [5 Horas] | 3.5h | 3.5h | 109.31 | 93 | 109.31 |
| 21 | CR 2.4.4 | Realizar estimaciones de las duraciones de las actividades | manual | 2h | 2023-10-27 09:00 A | 2023-10-27 11:00 A | 8, 18, 24 | 100% |  | 2023-10-27 09:00 | 2023-10-27 11:00 | 2h |  |  | Personal (Equipo de dirección); Ordenador portátil [2 Horas] | 2h | 2h | 62 | 62 | 62 |
| 22 | CR 2.4.3 | Redactar el listado de hitos | manual | 1h | 2023-10-27 09:00 A | 2023-10-27 10:00 A | 17, 24, 23, 21 | 100% |  | 2023-10-27 09:00 | 2023-10-27 10:00 | 1h | start no earlier than 2023-10-27 09:00 |  | Personal (Equipo de dirección); Ordenador portátil [1 Horas] | 1h | 1h | 31 | 31 | 31 |
| 23 | CR 2.4.2 | Redactar el listado de actividades | manual | 1.5h | 2023-10-27 09:00 A | 2023-10-27 10:30 A | 8, 18, 24 | 100% |  | 2023-10-27 09:00 | 2023-10-27 10:00 | 1h |  |  | Personal (Equipo de dirección); Ordenador portátil [3 Horas] | 1.5h | 1.5h | 47.31 | 31 | 47.31 |
| 24 | CR 2.4.1 | Redactar un plan de gestión del cronograma | manual | 1h | 2023-10-27 09:00 A | 2023-10-27 10:00 A | 8, 18 | 100% |  | 2023-10-27 09:00 | 2023-10-27 10:00 | 1h |  |  | Personal (Equipo de dirección); Ordenador portátil [1 Horas] | 1h | 1h | 31 | 31 | 31 |

| ID | WBS | Task | Type | Duration | Start | Finish | Predecessors | Complete | Actual finish | Baseline start | Baseline finish | Baseline duration | Constraint | Deadline | Resources | Work | Actual work | Cost | Baseline cost | Actual cost |
| --- | --- | --- | --- | --- | --- | --- | --- | --- | --- | --- | --- | --- | --- | --- | --- | --- | --- | --- | --- | --- |
| 25 | CO 2.5 | **Fase de planificación CO2** |  | 3h | 2023-10-27 09:00 A | 2023-10-27 12:00 |  | 100% | 2023-10-27 11:00 | 2023-10-27 09:00 | 2023-10-27 12:00 | 3h |  |  |  | 3h | 3h | 93 | 93 | 93 |
| 26 | CO 2.5.2 | Realizar la estimación de costes | manual | 2h | 2023-10-27 09:00 A | 2023-10-27 11:00 A | 8, 18, 20, 27, 30, 32, 37 | 100% |  | 2023-10-27 09:00 | 2023-10-27 11:00 | 2h | start no earlier than 2023-10-27 09:00 |  | Personal (Equipo de dirección); Ordenador portátil [2 Horas] | 2h | 2h | 62 | 62 | 62 |
| 27 | CO 2.5.1 | Realizar el documento de gestión de los costes | manual | 1h | 2023-10-27 09:00 A | 2023-10-27 10:00 A | 8, 24, 38 | 100% |  | 2023-10-27 09:00 | 2023-10-27 10:00 | 1h | start no earlier than 2023-10-27 09:00 |  | Personal (Equipo de dirección); Ordenador portátil [1 Horas] | 1h | 1h | 31 | 31 | 31 |
| 28 | CA 2.6 | **Fase de planificación CA2** |  | 3h | 2023-10-27 09:00 A | 2023-10-27 12:00 A |  | 100% |  | 2023-10-27 09:00 | 2023-10-27 12:00 | 3h |  |  |  | 3h | 3h | 93 | 93 | 93 |
| 29 | CA 2.6.2 | Definir las métricas de calidad | manual | 1h | 2023-10-27 09:00 A | 2023-10-27 10:00 A | 30 | 100% |  | 2023-10-27 09:00 | 2023-10-27 10:00 | 1h |  |  | Personal (Equipo de dirección); Ordenador portátil [1 Horas] | 1h | 1h | 31 | 31 | 31 |
| 30 | CA 2.6.1 | Desarrollar el plan de gestión de la calidad | manual | 2h | 2023-10-27 10:00 A | 2023-10-27 12:00 A | 8, 38 | 100% |  | 2023-10-27 10:00 | 2023-10-27 12:00 | 2h |  |  | Personal (Equipo de dirección); Ordenador portátil [2 Horas] | 2h | 2h | 62 | 62 | 62 |
| 31 | RE 2.7 | **Fase de planificación RE2** |  | 1h | 2023-10-27 09:00 A | 2023-10-27 10:00 A |  | 100% |  | 2023-10-27 09:00 | 2023-10-27 10:00 | 1h |  |  |  | 1h | 1h | 31 | 31 | 31 |
| 32 | RE 2.7.1 | Desarrollar el plan de gestión de los recursos | manual | 1h | 2023-10-27 09:00 A | 2023-10-27 10:00 A | 8, 13, 18, 30, 37 | 100% |  | 2023-10-27 09:00 | 2023-10-27 10:00 | 1h |  |  | Personal (Equipo de dirección); Ordenador portátil [1 Horas] | 1h | 1h | 31 | 31 | 31 |
| 33 | AD 2.8 | **Fase de planificación AD2** |  | 2h | 2023-11-03 09:00 A | 2023-11-03 11:00 |  | 100% | 2023-11-03 10:00 | 2023-11-03 09:00 | 2023-11-03 11:00 | 2h |  |  |  | 2h | 2h | 62 | 62 | 62 |
| 34 | AD 2.8.2 | Realizar las adquisiciones | manual | 1h | 2023-11-03 09:00 A | 2023-11-03 10:00 A | 35 | 100% |  | 2023-11-03 09:00 | 2023-11-03 10:00 | 1h |  |  | Personal (Equipo de dirección); Ordenador portátil [1 Horas] | 1h | 1h | 31 | 31 | 31 |
| 35 | AD 2.8.1 | Desarrollar el plan de gestión de adquisiciones | manual | 1h | 2023-11-03 09:00 A | 2023-11-03 10:00 A | 8, 13, 11, 18, 21, 30, 32, 37 | 100% |  | 2023-11-03 09:00 | 2023-11-03 10:00 | 1h |  |  | Personal (Equipo de dirección); Ordenador portátil [1 Horas] | 1h | 1h | 31 | 31 | 31 |
| 36 | RI 2.9 | **Fase de planificación RI2** |  | 2h | 2023-11-03 09:00 A | 2023-11-03 11:00 |  | 100% | 2023-11-03 10:00 | 2023-11-03 09:00 | 2023-11-03 11:00 | 2h |  |  |  | 2h | 2h | 62 | 62 | 62 |
| 37 | RI 2.9.2 | Rellenar el registro de riesgos | manual | 1h | 2023-11-03 09:00 A | 2023-11-03 10:00 A | 8, 12, 13, 18, 24, 30 | 100% |  | 2023-11-03 09:00 | 2023-11-03 10:00 | 1h |  |  | Personal (Equipo de dirección); Ordenador portátil [1 Horas] | 1h | 1h | 31 | 31 | 31 |
| 38 | RI 2.9.1 | Desarrollar el plan de gestión de riesgos | manual | 1h | 2023-11-03 09:00 A | 2023-11-03 10:00 A | 8 | 100% |  | 2023-11-03 09:00 | 2023-11-03 10:00 | 1h |  |  | Personal (Equipo de dirección); Ordenador portátil [1 Horas] | 1h | 1h | 31 | 31 | 31 |
| 39 | CB 2.10 | **Fase de planificación CB2** |  | 1h | 2023-11-03 09:00 A | 2023-11-03 10:00 A |  | 100% |  | 2023-11-03 09:00 | 2023-11-03 10:00 | 1h |  |  |  | 1h | 1h | 31 | 31 | 31 |
| 40 | CB 2.10.1 | Definir un plan de gestión del cambio | manual | 1h | 2023-11-03 09:00 A | 2023-11-03 10:00 A | 8, 18, 24, 30, 27, 32, 35, 38, 44 | 100% |  | 2023-11-03 09:00 | 2023-11-03 10:00 | 1h |  |  | Personal (Equipo de dirección); Ordenador portátil [1 Horas] | 1h | 1h | 31 | 31 | 31 |
| 41 | CF 2.11 | **Fase de planificación CF2** |  | 1h | 2023-11-03 09:00 A | 2023-11-03 10:00 A |  | 100% |  | 2023-11-03 09:00 | 2023-11-03 10:00 | 1h |  |  |  | 1h | 1h | 31 | 31 | 31 |
| 42 | CF 2.11.1 | Desarrollar el plan de gestión de la configuración | manual | 1h | 2023-11-03 09:00 A | 2023-11-03 10:00 A | 8, 12, 13, 11, 18, 17, 16, 15, 24, 23, 22, 21, 20, 27, 26, 30, 29, 32, 35, 38, 40, 44 | 100% |  | 2023-11-03 09:00 | 2023-11-03 10:00 | 1h |  |  | Personal (Equipo de dirección); Ordenador portátil [1 Horas] | 1h | 1h | 31 | 31 | 31 |
| 43 | CM 2.12 | **Fase de planificación CM2** |  | 1h | 2023-11-03 09:00 A | 2023-11-03 10:00 |  | 100% | 2023-11-03 09:30 | 2023-11-03 09:00 | 2023-11-03 10:00 | 1h |  |  |  | 1h | 1h | 31 | 31 | 31 |
| 44 | CM 2.12.2 | Planificar la gestión de las comunicaciones | manual | 0.5h | 2023-11-03 09:00 A | 2023-11-03 09:30 A | 8 | 100% |  | 2023-11-03 09:00 | 2023-11-03 09:30 | 0.5h |  |  | Personal (Equipo de dirección); Ordenador portátil [0.5 Horas] | 0.5h | 0.5h | 15.5 | 15.5 | 15.5 |
| 45 | CM 2.12.1 | Revisar el registro de interesados | manual | 0.5h | 2023-11-03 09:00 A | 2023-11-03 09:30 A | 3 | 100% |  | 2023-11-03 09:00 | 2023-11-03 09:30 | 0.5h |  |  | Personal (Equipo de dirección); Ordenador portátil [0.5 Horas] | 0.5h | 0.5h | 15.5 | 15.5 | 15.5 |
| 46 | E 3.1 | **Entregable E3.1** |  | 16d | 2023-11-13 09:00 A | 2023-12-04 19:00 |  | 100% | 2023-12-01 13:00 | 2023-11-13 09:00 | 2023-12-04 19:00 | 16d |  |  |  | 65.3h | 65.3h | 1,397.37 | 1,113.99 | 1,397.37 |
| 47 | E3.1.1 | **Fase de ejecución. Paquete de trabajo E3.1.1** |  | 5d | 2023-11-13 09:00 A | 2023-11-17 19:00 |  | 100% | 2023-11-17 10:00 | 2023-11-13 09:00 | 2023-11-17 19:00 | 5d |  |  |  | 21.65h | 21.65h | 461.49 | 392.99 | 461.49 |
| 48 | E3.1.1.1 | Realizar Sprint Planning | manual | 1.1h | 2023-11-13 09:00 A | 2023-11-13 10:06 A |  | 100% |  | 2023-11-13 09:00 | 2023-11-13 10:06 | 1.1h |  |  | Personal (Equipo de desarrollo); Ordenador portátil [1.1 Horas] | 1.1h | 1.1h | 23.43 | 23.43 | 23.43 |
| 49 | 5 | Inicio de la iteración 1 | milestone, manual | 1d | 2023-11-13 09:00 A | 2023-11-13 19:00 A |  | 100% |  | 2023-11-13 09:00 | 2023-11-13 19:00 | 1d |  | 2023-11-13 19:00 |  |  |  |  |  |  |
| 50 | E3.1.1.2 | Creación de la entidad motocicleta | manual | 0.5h | 2023-11-13 09:00 A | 2023-11-13 09:30 A |  | 100% |  | 2023-11-13 09:00 | 2023-11-13 09:33 | 0.55h |  |  | Personal (Equipo de desarrollo); Ordenador portátil [0.55 Horas] | 0.5h | 0.5h | 10.68 | 11.72 | 10.68 |
| 51 | E3.1.1.3 | Creación de la entidad componentes | manual | 0.5h | 2023-11-13 09:00 A | 2023-11-13 09:30 A |  | 100% |  | 2023-11-13 09:00 | 2023-11-13 09:33 | 0.55h |  |  | Personal (Equipo de desarrollo); Ordenador portátil [0.55 Horas] | 0.5h | 0.5h | 10.68 | 11.72 | 10.68 |
| 52 | E3.1.1.4 | Creación de la entidad usuario | manual | 0.5h | 2023-11-13 09:00 A | 2023-11-13 09:30 A |  | 100% |  | 2023-11-13 09:00 | 2023-11-13 09:33 | 0.55h |  |  | Personal (Equipo de desarrollo); Ordenador portátil [0.55 Horas] | 0.5h | 0.5h | 10.68 | 11.72 | 10.68 |
| 53 | E3.1.1.5 | Creación de la entidad reclamaciones | manual | 0.5h | 2023-11-13 09:00 A | 2023-11-13 09:30 A |  | 100% |  | 2023-11-13 09:00 | 2023-11-13 09:33 | 0.55h |  |  | Personal (Equipo de desarrollo); Ordenador portátil [0.55 Horas] | 0.5h | 0.5h | 10.68 | 11.72 | 10.68 |
| 54 | E3.1.1.6 | Creación de la entidad opinión | manual | 0.5h | 2023-11-13 09:00 A | 2023-11-13 09:30 A |  | 100% |  | 2023-11-13 09:00 | 2023-11-13 09:33 | 0.55h |  |  | Personal (Equipo de desarrollo); Ordenador portátil [0.55 Horas] | 0.5h | 0.5h | 10.68 | 11.72 | 10.68 |
| 55 | E3.1.1.7 | Creación de la entidad pedido | manual | 0.5h | 2023-11-13 09:00 A | 2023-11-13 09:30 A |  | 100% |  | 2023-11-13 09:00 | 2023-11-13 09:33 | 0.55h |  |  | Personal (Equipo de desarrollo); Ordenador portátil [0.55 Horas] | 0.5h | 0.5h | 10.68 | 11.72 | 10.68 |
| 56 | E3.1.1.8 | Crear registro de usuarios | manual | 1.5h | 2023-11-14 09:00 A | 2023-11-14 10:30 A | 52 | 100% |  | 2023-11-14 09:00 | 2023-11-14 10:00 | 1h |  |  | Personal (Equipo de desarrollo); Ordenador portátil [1.5 Horas] | 1.5h | 1.5h | 31.95 | 21.3 | 31.95 |
| 57 | E3.1.1.9 | Inicio de sesión de los usuarios | manual | 1h | 2023-11-14 10:00 A | 2023-11-14 11:00 A | 56, 52 | 100% |  | 2023-11-14 10:00 | 2023-11-14 11:00 | 1h |  |  | Personal (Equipo de desarrollo); Ordenador portátil [1 Horas] | 1h | 1h | 21.3 | 21.3 | 21.3 |
| 58 | E3.1.1.10 | Añadir edición del perfil de los usuarios | manual | 1h | 2023-11-14 09:00 A | 2023-11-14 10:00 A | 52 | 100% |  | 2023-11-14 09:00 | 2023-11-14 10:00 | 1h |  |  | Personal (Equipo de desarrollo); Ordenador portátil [1 Horas] | 1h | 1h | 21.3 | 21.3 | 21.3 |
| 59 | E3.1.1.11 | Añadir reglas de negocio sobre los usuarios | manual | 0.55h | 2023-11-15 09:00 A | 2023-11-15 09:33 A | 52, 58, 56 | 100% |  | 2023-11-15 09:00 | 2023-11-15 09:33 | 0.55h |  |  | Personal (Equipo de desarrollo); Ordenador portátil [0.55 Horas] | 0.55h | 0.55h | 11.72 | 11.72 | 11.72 |
| 60 | E3.1.1.12 | Popular la base de datos | manual | 4h | 2023-11-15 09:00 A | 2023-11-15 13:00 A | 50, 51, 52, 53, 54, 55 | 100% |  | 2023-11-15 09:00 | 2023-11-15 12:00 | 3h |  |  | Personal (Equipo de desarrollo); Ordenador portátil [5.33 Horas] | 4h | 4h | 85.92 | 63.9 | 85.92 |
| 61 | E3.1.1.13 | Añadir la visualización/ búsqueda de productos | manual | 4h | 2023-11-16 09:00 A | 2023-11-16 13:00 A | 50, 51 | 100% |  | 2023-11-16 09:00 | 2023-11-16 12:00 | 3h |  |  | Personal (Equipo de desarrollo); Ordenador portátil [3 Horas] | 4h | 4h | 84.66 | 63.9 | 84.66 |
| 62 | E3.1.1.14 | Añadir marca corporativa a la interfaz | manual | 4h | 2023-11-15 09:00 A | 2023-11-15 13:00 A |  | 100% |  | 2023-11-15 09:00 | 2023-11-15 12:00 | 3h |  |  | Personal (Equipo de desarrollo); Ordenador portátil [4 Horas] | 4h | 4h | 85.2 | 63.9 | 85.2 |
| 63 | E3.1.1.15 | Realizar Sprint Review | manual | 0.5h | 2023-11-16 09:00 A | 2023-11-16 09:30 A |  | 100% |  | 2023-11-16 09:00 | 2023-11-16 09:30 | 0.5h |  |  | Personal (Equipo de desarrollo); Ordenador portátil [0.5 Horas] | 0.5h | 0.5h | 10.65 | 10.65 | 10.65 |
| 64 | E3.1.1.16 | Realizar Sprint Retrospective | manual | 1h | 2023-11-17 09:00 A | 2023-11-17 10:00 A | 63 | 100% |  | 2023-11-17 09:00 | 2023-11-17 10:00 | 1h |  |  | Personal (Equipo de desarrollo); Ordenador portátil [1 Horas] | 1h | 1h | 21.3 | 21.3 | 21.3 |
| 65 | 3 | Inicio de la fase de ejecución | milestone, manual | 1d | 2023-11-13 09:00 A | 2023-11-13 19:00 A |  | 100% |  | 2023-11-13 09:00 | 2023-11-13 19:00 | 1d |  | 2023-11-13 19:00 |  |  |  |  |  |  |

| ID | WBS | Task | Type | Duration | Start | Finish | Predecessors | Complete | Actual finish | Baseline start | Baseline finish | Baseline duration | Deadline | Resources | Work | Actual work | Cost | Baseline cost | Actual cost |
| --- | --- | --- | --- | --- | --- | --- | --- | --- | --- | --- | --- | --- | --- | --- | --- | --- | --- | --- | --- |
| 66 | E3.1.2 | **Fase de ejecución. Paquete de trabajo E3.1.2** |  | 6d | 2023-11-20 09:00 A | 2023-11-27 19:00 |  | 100% | 2023-11-27 10:00 | 2023-11-20 09:00 | 2023-11-27 19:00 | 6d |  |  | 20.15h | 20.15h | 430.06 | 378.07 | 430.06 |
| 67 | E3.1.2.1 | Realizar Sprint Planning | manual | 0.5h | 2023-11-20 09:00 A | 2023-11-20 09:30 A |  | 100% |  | 2023-11-20 09:00 | 2023-11-20 10:06 | 1.1h |  | Personal (Equipo de desarrollo); Ordenador portátil [1.1 Horas] | 0.5h | 0.5h | 10.97 | 23.43 | 10.97 |
| 68 | E3.1.2.2 | Añadir cesta de la compra y permitir su modificación | manual | 2.75h | 2023-11-20 09:00 A | 2023-11-20 11:45 A | 61 | 100% |  | 2023-11-20 09:00 | 2023-11-20 11:00 | 2h |  | Personal (Equipo de desarrollo); Ordenador portátil [2 Horas] | 2.75h | 2.75h | 58.17 | 42.6 | 58.17 |
| 69 | 6 | Inicio de la iteración 2 | milestone, manual | 1d | 2023-11-20 09:00 A | 2023-11-20 19:00 A |  | 100% |  | 2023-11-20 09:00 | 2023-11-20 19:00 | 1d | 2023-11-20 19:00 |  |  |  |  |  |  |
| 70 | E3.1.2.3 | Desarrollar la finalización de las compras | manual | 4h | 2023-11-21 09:00 A | 2023-11-21 13:00 A | 68 | 100% |  | 2023-11-21 09:00 | 2023-11-21 12:00 | 3h |  | Personal (Equipo de desarrollo); Ordenador portátil [4 Horas] | 4h | 4h | 85.2 | 63.9 | 85.2 |
| 71 | E3.1.2.4 | Incluir regla de negocio sobre el stock de productos | manual | 0.55h | 2023-11-22 09:00 A | 2023-11-22 09:33 A | 70 | 100% |  | 2023-11-22 09:00 | 2023-11-22 09:33 | 0.55h |  | Personal (Equipo de desarrollo); Ordenador portátil [0.55 Horas] | 0.55h | 0.55h | 11.72 | 11.72 | 11.72 |
| 72 | E3.1.2.5 | Añadir regla de negocio sobre el envío gratuito | manual | 0.55h | 2023-11-22 09:00 A | 2023-11-22 09:33 A | 70 | 100% |  | 2023-11-22 09:00 | 2023-11-22 09:33 | 0.55h |  | Personal (Equipo de desarrollo); Ordenador portátil [0.55 Horas] | 0.55h | 0.55h | 11.72 | 11.72 | 11.72 |
| 73 | E3.1.2.6 | Desarrollar envío de correos tras completar un pedido | manual | 1.5h | 2023-11-22 09:00 A | 2023-11-22 10:30 A | 70 | 100% |  | 2023-11-22 09:00 | 2023-11-22 10:30 | 1.5h |  | Personal (Equipo de desarrollo); Ordenador portátil [1.5 Horas] | 1.5h | 1.5h | 31.95 | 31.95 | 31.95 |
| 74 | E3.1.2.7 | Hacer datos de la tienda siempre visibles | manual | 0.25h | 2023-11-21 09:00 A | 2023-11-21 09:15 A |  | 100% |  | 2023-11-21 09:00 | 2023-11-21 10:00 | 1h |  | Personal (Equipo de desarrollo); Ordenador portátil [1 Horas] | 0.25h | 0.25h | 5.73 | 21.3 | 5.73 |
| 75 | E3.1.2.8 | Señalar productos agotados | manual | 0.55h | 2023-11-20 09:00 A | 2023-11-20 09:33 A | 61 | 100% |  | 2023-11-20 09:00 | 2023-11-20 09:33 | 0.55h |  | Personal (Equipo de desarrollo); Ordenador portátil [0.55 Horas] | 0.55h | 0.55h | 11.72 | 11.72 | 11.72 |
| 76 | E3.1.2.9 | Añadir protocolos de seguridad a la aplicación | manual | 3h | 2023-11-23 09:00 A | 2023-11-23 12:00 A |  | 100% |  | 2023-11-23 09:00 | 2023-11-23 13:00 | 4h |  | Personal (Equipo de desarrollo); Ordenador portátil [4 Horas] | 3h | 3h | 64.44 | 85.2 | 64.44 |
| 77 | E3.1.2.10 | Implementar consulta de estados del pedido para cliente registrado y no registrado | manual | 5h | 2023-11-23 15:00 A | 2023-11-24 10:00 A | 70, 73 | 100% |  | 2023-11-23 15:00 | 2023-11-23 17:00 | 2h |  | Personal (Equipo de desarrollo); Ordenador portátil [5 Horas] | 5h | 5h | 106.5 | 42.6 | 106.5 |
| 78 | E3.1.2.11 | Realizar Sprint Review | manual | 0.5h | 2023-11-24 09:00 A | 2023-11-24 09:30 A |  | 100% |  | 2023-11-24 09:00 | 2023-11-24 09:30 | 0.5h |  | Personal (Equipo de desarrollo); Ordenador portátil [0.5 Horas] | 0.5h | 0.5h | 10.65 | 10.65 | 10.65 |
| 79 | E3.1.2.12 | Realizar Sprint Retrospective | manual | 1h | 2023-11-27 09:00 A | 2023-11-27 10:00 A | 63 | 100% |  | 2023-11-27 09:00 | 2023-11-27 10:00 | 1h |  | Personal (Equipo de desarrollo); Ordenador portátil [1 Horas] | 1h | 1h | 21.3 | 21.3 | 21.3 |
| 80 | E3.1.3 | **Fase de ejecución. Paquete de trabajo E3.1.3** |  | 6d | 2023-11-27 09:00 A | 2023-12-04 19:00 |  | 100% | 2023-12-01 13:00 | 2023-11-27 09:00 | 2023-12-04 19:00 | 6d |  |  | 23.5h | 23.5h | 505.83 | 342.93 | 505.83 |
| 81 | E3.1.3.1 | Realizar Sprint Planning | manual | 0.5h | 2023-11-27 09:00 A | 2023-11-27 09:30 A |  | 100% |  | 2023-11-27 09:00 | 2023-11-27 10:06 | 1.1h |  | Personal (Equipo de desarrollo); Ordenador portátil [12.27 Horas] | 0.5h | 0.5h | 17.01 | 23.43 | 17.01 |
| 82 | E3.1.3.2 | Añadir protocolo de configuración de motocicletas | manual | 4h | 2023-11-30 09:00 A | 2023-11-30 13:00 A | 60 | 100% |  | 2023-11-30 09:00 | 2023-11-30 12:00 | 3h |  | Personal (Equipo de desarrollo); Ordenador portátil [3 Horas] | 4h | 4h | 84.66 | 63.9 | 84.66 |
| 83 | E3.1.3.3 | Añadir funcionalidad de opiniones para los usuarios | manual | 2h | 2023-11-27 09:00 A | 2023-11-27 11:00 A | 54, 57 | 100% |  | 2023-11-27 09:00 | 2023-11-27 10:30 | 1.5h |  | Personal (Equipo de desarrollo); Ordenador portátil [2.5 Horas] | 2h | 2h | 42.87 | 31.95 | 42.87 |
| 84 | E3.1.3.4 | Añadir funcionalidad de reclamaciones para los usuarios | manual | 1h | 2023-11-28 09:00 A | 2023-11-28 10:00 A | 57, 53 | 100% |  | 2023-11-28 09:00 | 2023-11-28 10:30 | 1.5h |  | Personal (Equipo de desarrollo); Ordenador portátil [1.5 Horas] | 1h | 1h | 21.57 | 31.95 | 21.57 |
| 85 | E3.1.3.5 | Implementar gestión de los clientes para administradores | manual | 2h | 2023-11-28 09:00 A | 2023-11-28 11:00 A | 52 | 100% |  | 2023-11-28 09:00 | 2023-11-28 10:30 | 1.5h |  | Personal (Equipo de desarrollo); Ordenador portátil [1.5 Horas] | 2h | 2h | 42.33 | 31.95 | 42.33 |
| 86 | E3.1.3.6 | Implementar gestión de los pedidos para los administradores | manual | 1.5h | 2023-11-29 09:00 A | 2023-11-29 10:30 A | 55 | 100% |  | 2023-11-29 09:00 | 2023-11-29 10:30 | 1.5h |  | Personal (Equipo de desarrollo); Ordenador portátil [1.5 Horas] | 1.5h | 1.5h | 31.95 | 31.95 | 31.95 |
| 87 | E3.1.3.7 | Implementar gestión de los productos para los administradores | manual | 3h | 2023-11-29 09:00 A | 2023-11-29 12:00 A | 51, 50 | 100% |  | 2023-11-29 09:00 | 2023-11-29 10:30 | 1.5h |  | Personal (Equipo de desarrollo); Ordenador portátil [1.5 Horas] | 3h | 3h | 63.09 | 31.95 | 63.09 |
| 88 | E3.1.3.8 | Implementar gestión de las reclamaciones para los administradores | manual | 1h | 2023-11-27 09:00 A | 2023-11-27 10:00 A | 53 | 100% |  | 2023-11-27 09:00 | 2023-11-27 10:30 | 1.5h |  | Personal (Equipo de desarrollo); Ordenador portátil [1.5 Horas] | 1h | 1h | 21.57 | 31.95 | 21.57 |
| 89 | E3.1.3.9 | Preparar entrega | manual | 4h | 2023-12-01 09:00 A | 2023-12-01 13:00 A |  | 100% |  |  |  |  |  | Ordenador portátil [4 Horas]; Personal (Equipo de desarrollo) | 4h | 4h | 85.2 |  | 85.2 |
| 90 | E3.1.3.10 | Implementar gestión de las ventas para administradores | manual | 2h | 2023-11-30 09:00 A | 2023-11-30 11:00 A |  | 100% |  | 2023-11-30 09:00 | 2023-11-30 10:30 | 1.5h |  | Personal (Equipo de desarrollo); Ordenador portátil [1.5 Horas] | 2h | 2h | 42.33 | 31.95 | 42.33 |
| 91 | E3.1.3.11 | Realizar Sprint Review | manual | 0.5h | 2023-11-30 09:00 A | 2023-11-30 09:30 A |  | 100% |  | 2023-11-30 09:00 | 2023-11-30 09:30 | 0.5h |  | Personal (Equipo de desarrollo); Ordenador portátil [0.5 Horas] | 0.5h | 0.5h | 10.65 | 10.65 | 10.65 |
| 92 | E3.1.3.12 | Realizar Sprint Retrospective | manual | 1h | 2023-12-01 09:00 A | 2023-12-01 10:00 A | 63 | 100% |  | 2023-12-04 09:00 | 2023-12-04 10:00 | 1h |  | Personal (Equipo de desarrollo); Ordenador portátil [1 Horas] | 1h | 1h | 21.3 | 21.3 | 21.3 |
| 93 | E3.1.3.13 | Manual para la compra | manual | 1h | 2023-11-27 09:00 A | 2023-11-27 10:00 A |  | 100% |  |  |  |  |  | Personal (Equipo de desarrollo); Ordenador portátil [1 Horas] | 1h | 1h | 21.3 |  | 21.3 |
| 94 | 7 | Inicio de la iteración 3 | milestone, manual | 1d | 2023-11-27 09:00 A | 2023-11-27 19:00 A |  | 100% |  | 2023-11-27 09:00 | 2023-11-27 19:00 | 1d | 2023-11-27 19:00 |  |  |  |  |  |  |

| ID | WBS | Task | Type | Duration | Start | Finish | Predecessors | Complete | Actual finish | Baseline start | Baseline finish | Baseline duration | Deadline | Resources | Work | Actual work | Cost | Baseline cost | Actual cost |
| --- | --- | --- | --- | --- | --- | --- | --- | --- | --- | --- | --- | --- | --- | --- | --- | --- | --- | --- | --- |
| 95 | S 3.2 | **Entregable S3.2** |  | 16d | 2023-11-13 09:00 A | 2023-12-04 19:00 |  | 100% | 2023-12-04 13:00 | 2023-11-13 09:00 | 2023-12-04 19:00 | 16d |  |  | 32h | 32h | 964.4 | 1,100.2 | 964.4 |
| 96 | S 3.2.1 | Realizar seguimiento del proyecto y generar la documentación respectiva a la iteración 1 | manual | 10h | 2023-11-17 09:00 A | 2023-11-20 11:00 A | 47 | 100% |  | 2023-11-17 09:00 | 2023-11-20 15:12 | 12.2h |  | Personal (Equipo de calidad); Ordenador portátil [12.2 Horas] | 10h | 10h | 301.79 | 366.73 | 301.79 |
| 97 | 4 | Inicio de la fase de seguimiento y control | milestone, manual | 1d | 2023-11-13 09:00 A | 2023-11-13 19:00 A |  | 100% |  | 2023-11-13 09:00 | 2023-11-13 19:00 | 1d | 2023-11-13 19:00 |  |  |  |  |  |  |
| 98 | S 3.2.2 | Realizar seguimiento del proyecto y generar la documentación respectiva a la iteración 2 | manual | 10h | 2023-11-24 09:00 A | 2023-11-27 11:00 A | 66 | 100% |  | 2023-11-24 09:00 | 2023-11-27 15:12 | 12.2h |  | Personal (Equipo de calidad); Ordenador portátil [12.2 Horas] | 10h | 10h | 301.79 | 366.73 | 301.79 |
| 99 | S 3.2.3 | Realizar seguimiento del proyecto y generar la documentación respectiva a la iteración 3 | manual | 12h | 2023-12-01 09:00 A | 2023-12-04 13:00 A | 80 | 100% |  | 2023-12-01 09:00 | 2023-12-04 15:12 | 12.2h |  | Personal (Equipo de calidad); Ordenador portátil [12.2 Horas] | 12h | 12h | 360.83 | 366.73 | 360.83 |
| 100 | CI4 | **Fase de cierre. Paquete de trabajo CI4** |  | 7d | 2023-12-04 09:00 | 2023-12-14 19:00 |  |  |  | 2023-12-04 09:00 | 2023-12-14 19:00 | 7d |  |  | 4h |  | 124 | 124 |  |
| 101 | 10 | Cierre del proyecto | manual | 1d | 2023-12-04 09:00 | 2023-12-04 19:00 |  |  |  | 2023-12-04 09:00 | 2023-12-04 19:00 | 1d | 2023-12-14 19:00 |  |  |  |  |  |  |
| 102 | 9 | Presentación del proyecto | manual | 1d | 2023-12-04 09:00 | 2023-12-04 19:00 |  |  |  | 2023-12-04 09:00 | 2023-12-04 19:00 | 1d | 2023-12-14 19:00 |  |  |  |  |  |  |
| 103 | 8 | Entrega del proyecto | manual | 1d | 2023-12-04 09:00 | 2023-12-04 19:00 |  |  |  | 2023-12-04 09:00 | 2023-12-04 19:00 | 1d | 2023-12-13 19:00 |  |  |  |  |  |  |
| 104 | CI4.1.4 | Desarrollar un manual para el despliegue del contenedor | manual | 1h | 2023-12-05 09:00 | 2023-12-05 10:00 | 46 |  |  | 2023-12-05 09:00 | 2023-12-05 10:00 | 1h |  | Personal (Equipo de dirección); Ordenador portátil [1 Horas] | 1h |  | 31 | 31 |  |
| 105 | CI4.1.3 | Desarrollo de la presentación de cierre | manual | 1h | 2023-12-12 09:00 | 2023-12-12 10:00 | 106 |  |  | 2023-12-12 09:00 | 2023-12-12 10:00 | 1h |  | Personal (Equipo de dirección); Ordenador portátil [1 Horas] | 1h |  | 31 | 31 |  |
| 106 | CI4.1.2 | Desarrollo del informe de cierre | manual | 1h | 2023-12-11 09:00 | 2023-12-11 10:00 | 46 |  |  | 2023-12-11 09:00 | 2023-12-11 10:00 | 1h |  | Personal (Equipo de dirección); Ordenador portátil [1 Horas] | 1h |  | 31 | 31 |  |
| 107 | CI4.1.1 | Registro de lecciones aprendidas | manual | 1h | 2023-12-05 09:00 | 2023-12-05 10:00 | 95, 46 |  |  | 2023-12-05 09:00 | 2023-12-05 10:00 | 1h |  | Personal (Equipo de dirección); Ordenador portátil [1 Horas] | 1h |  | 31 | 31 |  |
